# P2

How a schedule from MS Project changed from version to version. A marks actual dates.

## Version 1 (saved 2022-11-07, file P2.mpp)

| ID | WBS | Task | Duration | Start | Finish | Predecessors | Total float |
| --- | --- | --- | --- | --- | --- | --- | --- |
| 1 | 1 | **Requerimientos de los usuarios** | 3.5d | 2022-11-17 | 2022-11-22 |  | 2.5d |
| 2 |  | Toma de requisitos de usuario | 2.5d | 2022-11-17 | 2022-11-21 |  | 2.5d |
| 3 |  | Validacion de los requisitos de usuarios | 1d | 2022-11-21 | 2022-11-22 | 2 | 2.5d |
| 4 | 2 | **Analisis de requisitos del software** | 10d | 2022-11-17 | 2022-11-30 |  | 0d |
| 5 |  | Estudio de los requisitos software | 6d | 2022-11-17 | 2022-11-24 |  | 0d |
| 6 |  | Validacion de los requisitos de software | 1d | 2022-11-25 | 2022-11-25 | 5 | 0d |
| 7 |  | Instalacion del software necesario en los PCs | 2d | 2022-11-28 | 2022-11-29 | 6 | 0d |
| 8 |  | Preparacion de los puestos de trabajo | 1d | 2022-11-30 | 2022-11-30 | 7 | 0d |
| 9 |  | Preparacion del servidor de desarrollo | 4d | 2022-11-25 | 2022-11-30 | 5 | 0d |
| 10 |  | Preparacion del servidor de preexplotacion | 1d | 2022-11-25 | 2022-11-25 | 5 | 3d |
| 11 | 3 | **Analisis de requisitos del sistema** | 4d | 2022-11-22 | 2022-11-28 |  | 2.5d |
| 12 |  | Estimacion de hardware necesario | 12h | 2022-11-22 | 2022-11-23 | 3 | 2.5d |
| 13 |  | Validacion de hardware necesario | 20h | 2022-11-24 | 2022-11-28 | 12 | 2.5d |
| 14 | 4 | **Diseño preliminar** | 15.55d | 2022-12-01 | 2023-01-09 |  | 0d |
| 15 |  | Diseño de los datos y procesos | 6d | 2022-12-01 | 2022-12-12 | 1, 4, 11 | 0d |
| 16 |  | Diseño del plan de pruebas | 2d | 2022-12-15 | 2023-01-09 | 15 | 15.23d |
| 17 | 5 | **Diseño detallado** | 10d | 2022-12-16 | 2023-01-13 |  | 11.23d |
| 18 |  | Diseño grafico de la aplicación | 5d | 2022-12-16 | 2022-12-23 | 15 | 16.23d |
| 19 | 5.2 | **Diseño tecnico de componentes** | 10d | 2022-12-16 | 2023-01-13 | 15 | 11.23d |
| 20 |  | Presentacion | 1d | 2022-12-23 | 2023-01-09 | 15 | 15.23d |
| 21 |  | Mantenimiento de explotacion perquera | 2d | 2023-01-11 | 2023-01-13 | 15 | 11.23d |
| 22 |  | Mantenimiento de historial; Reservas, Tarifas y Eventos | 4d | 2022-12-16 | 2022-12-22 | 15 | 17.23d |
| 23 |  | Localizacion | 5d | 2022-12-21 | 2023-01-11 | 15 | 13.23d |
| 24 | 6 | **Diseño de la base de datos** | 10.23d | 2022-12-20 | 2023-01-17 |  | 0.45d |
| 25 |  | Diseño de tablas y relaciones | 3d | 2022-12-20 | 2022-12-23 | 15 | 0.45d |
| 26 |  | Validacion del diseño de la BD | 3d | 2023-01-09 | 2023-01-17 | 25 | 3.17d |
| 27 | 7 | **Construccion** | 23.61d | 2022-12-09 | 2023-01-25 |  | 0d |
| 28 |  | Construccion del prototipo | 3d | 2022-12-16 | 2022-12-21 | 15SS+5d | 18.23d |
| 29 |  | Construccion de la BD | 3.5d | 2023-01-17 | 2023-01-25 | 26 | 3.17d |
| 30 |  | Codificacion | 14.34d | 2022-12-09 | 2023-01-16 | 15FS-2d | 0d |
| 31 | 8 | **Pruebas** | 4.83d | 2023-01-16 | 2023-01-23 |  | 0d |
| 32 |  | Pruebas unitarias | 1.5d | 2023-01-16 | 2023-01-17 | 30 | 0d |
| 33 |  | Pruebas de integracion | 1d | 2023-01-17 | 2023-01-18 | 32 | 0d |
| 34 |  | Pruebas del sistema | 2.33d | 2023-01-18 | 2023-01-23 | 33 | 0.67d |
| 35 | 9 | **Demostracion a los usuarios** | 5d | 2023-01-23 | 2023-01-30 |  | 0.67d |
| 36 |  | Entrenamiento de usuarios | 32h | 2023-01-23 | 2023-01-27 | 34 | 0.67d |
| 37 |  | Validacion del producto por los usuarios | 1d | 2023-01-27 | 2023-01-30 | 36 | 0.67d |
| 38 | 10 | **Documentacion** | 20.5d | 2022-12-19 | 2023-01-30 |  | 0d |
| 39 |  | Documentacion tecnica de proyecto | 10d | 2022-12-19 | 2023-01-16 | 30FF | 10.5d |
| 40 |  | Documentacion de usuarios | 5d | 2023-01-23 | 2023-01-30 | 33FS+3d | 0d |

## Version 2 (saved 2022-11-22, file P2FINAL.mpp)

Last finish stays 2023-01-30.

Added:

| ID | Task | Duration | Start | Finish |
| --- | --- | --- | --- | --- |
| 1 | **proyecto** | 40.5d | 2022-11-17 | 2023-01-30 |

Changed:

| ID | Task | Start | Finish | Duration | Total float | Other |
| --- | --- | --- | --- | --- | --- | --- |
| 2 | **Requerimientos de los usuarios** |  | 2022-11-22 → 2022-11-24 (+2d) | 3.5d → 6d | 2.5d → 0.5d |  |
| 3 | Toma de requisitos de usuario |  | 2022-11-21 → 2022-11-23 (+2d) | 2.5d → 5d | 2.5d → 0.5d | resources AnalistaP; AnalistaD → AnalistaD |
| 4 | Validacion de los requisitos de usuarios | 2022-11-21 → 2022-11-24 (+3d) | 2022-11-22 → 2022-11-24 (+2d) |  | 2.5d → 0.5d |  |
| 5 | **Analisis de requisitos del software** |  | 2022-11-30 → 2022-11-25 (-5d) | 10d → 7d | 0d → 4d |  |
| 6 | Estudio de los requisitos software |  | 2022-11-24 → 2022-11-21 (-3d) | 6d → 3d | 0d → 1d | resources AnalistaW → AnalistaW; AnalistaP |
| 7 | Validacion de los requisitos de software | 2022-11-25 → 2022-11-22 (-3d) | 2022-11-25 → 2022-11-22 (-3d) |  | 0d → 1d | constraint none → start no earlier than 2022-11-21 |
| 8 | Instalacion del software necesario en los PCs | 2022-11-28 → 2022-11-23 (-5d) | 2022-11-29 → 2022-11-24 (-5d) |  | 0d → 4d | constraint none → start no earlier than 2022-11-22 |
| 9 | Preparacion de los puestos de trabajo | 2022-11-30 → 2022-11-25 (-5d) | 2022-11-30 → 2022-11-25 (-5d) |  | 0d → 4d | constraint none → start no earlier than 2022-11-25 |
| 10 | Preparacion del servidor de desarrollo | 2022-11-25 → 2022-11-22 (-3d) | 2022-11-30 → 2022-11-25 (-5d) |  | 0d → 4d | resources AnalistaD → AnalistaW |
| 11 | Preparacion del servidor de preexplotacion | 2022-11-25 → 2022-11-22 (-3d) | 2022-11-25 → 2022-11-22 (-3d) |  | 3d → 7d | resources ProgramadorJ → AnalistaP |
| 12 | **Analisis de requisitos del sistema** | 2022-11-22 → 2022-11-25 (+3d) | 2022-11-28 → 2022-12-01 (+3d) | 4d → 4.5d | 2.5d → 0.5d |  |
| 13 | Estimacion de hardware necesario | 2022-11-22 → 2022-11-25 (+3d) | 2022-11-23 → 2022-11-29 (+6d) | 12h → 24h | 2.5d → 0.5d | resources ProgramadorJ; AnalistaP → AnalistaD |
| 14 | Validacion de hardware necesario | 2022-11-24 → 2022-11-30 (+6d) | 2022-11-28 → 2022-12-01 (+3d) | 20h → 12h | 2.5d → 0.5d | resources AnalistaW; Jefe A → Jefe A; ProgramadorJ |
| 15 | **Diseño preliminar** |  | 2023-01-09 → 2022-12-21 (-19d) | 15.55d → 12d | 0d → 0.5d |  |
| 16 | Diseño de los datos y procesos |  | 2022-12-12 → 2022-12-13 (+1d) |  | 0d → 0.5d | resources AnalistaD; Jefe A → Jefe A; AnalistaD |
| 17 | Diseño del plan de pruebas | 2022-12-15 → 2022-12-13 (-2d) | 2023-01-09 → 2022-12-21 (-19d) | 2d → 1.5d | 15.23d → 18d | resources Jefe A; AnalistaD → AnalistaD; Jefe A |
| 18 | **Diseño detallado** | 2022-12-16 → 2022-12-19 (+3d) | 2023-01-13 → 2023-01-27 (+14d) | 10d → 19.5d | 11.23d → 1d |  |
| 19 | Diseño grafico de la aplicación | 2022-12-16 → 2022-12-19 (+3d) |  |  | 16.23d → 15.5d | constraint none → start no earlier than 2022-12-19 |
| 20 | **Diseño tecnico de componentes** | 2022-12-16 → 2022-12-21 (+5d) | 2023-01-13 → 2023-01-27 (+14d) | 10d → 17d | 11.23d → 1d |  |
| 21 | Presentacion | 2022-12-23 → 2023-01-09 (+17d) |  |  | 15.23d → 14.5d | constraint none → start no earlier than 2022-12-19 |
| 22 | Mantenimiento de explotacion perquera | 2023-01-11 → 2023-01-10 (-1d) | 2023-01-13 → 2023-01-11 (-2d) |  | 11.23d → 12.5d | constraint none → start no earlier than 2023-01-10; resources AnalistaP → AnalistaW |
| 23 | Mantenimiento de historial; Reservas, Tarifas y Eventos | 2022-12-16 → 2023-01-23 (+38d) | 2022-12-22 → 2023-01-27 (+36d) |  | 17.23d → 1d | constraint none → start no earlier than 2023-01-18 |
| 24 | Localizacion |  |  |  | 13.23d → 13d | constraint none → start no earlier than 2022-12-19; resources AnalistaP → AnalistaD |
| 25 | **Diseño de la base de datos** | 2022-12-20 → 2022-12-14 (-6d) | 2023-01-17 → 2022-12-20 (-28d) | 10.23d → 5d | 0.45d → 3d |  |
| 26 | Diseño de tablas y relaciones | 2022-12-20 → 2022-12-14 (-6d) | 2022-12-23 → 2022-12-16 (-7d) |  | 0.45d → 3d | constraint none → start no earlier than 2022-12-14 |
| 27 | Validacion del diseño de la BD | 2023-01-09 → 2022-12-19 (-21d) | 2023-01-17 → 2022-12-20 (-28d) | 3d → 2d | 3.17d → 3d | resources AnalistaD; Jefe A → Jefe A; AnalistaD |
| 28 | **Construccion** | 2022-12-09 → 2022-12-12 (+3d) | 2023-01-25 → 2023-01-23 (-2d) | 23.61d → 20.5d |  |  |
| 29 | Construccion del prototipo | 2022-12-16 → 2023-01-18 (+33d) | 2022-12-21 → 2023-01-23 (+33d) |  | 18.23d → 5d | constraint none → start no earlier than 2022-12-14; resources AnalistaP → ProgramadorJ |
| 30 | Construccion de la BD | 2023-01-17 → 2023-01-11 (-6d) | 2023-01-25 → 2023-01-16 (-9d) | 3.5d → 3d | 3.17d → 10d | resources AnalistaD; ProgramadorJ → AnalistaD; AnalistaW |
| 31 | Codificacion | 2022-12-09 → 2022-12-12 (+3d) |  | 14.34d → 15.5d |  | constraint none → start no earlier than 2022-12-12; resources AnalistaD; AnalistaP; AnalistaW; ProgramadorJ; Jefe A → AnalistaP; ProgramadorJ |
| 32 | **Pruebas** |  | 2023-01-23 → 2023-01-24 (+1d) | 4.83d → 5.5d |  |  |
| 33 | Pruebas unitarias |  |  | 1.5d → 1d |  | resources ProgramadorJ; AnalistaP → AnalistaP; ProgramadorJ; AnalistaW |
| 34 | Pruebas de integracion |  |  |  |  | resources ProgramadorJ; AnalistaP → AnalistaP; ProgramadorJ |
| 35 | Pruebas del sistema |  | 2023-01-23 → 2023-01-24 (+1d) | 2.33d → 3.5d | 0.67d → 1.5d | resources ProgramadorJ; AnalistaD; AnalistaP → AnalistaP; AnalistaW |
| 36 | **Demostracion a los usuarios** | 2023-01-23 → 2023-01-24 (+1d) | 2023-01-30 → 2023-01-27 (-3d) | 5d → 3d | 0.67d → 1.5d |  |
| 37 | Entrenamiento de usuarios | 2023-01-23 → 2023-01-24 (+1d) | 2023-01-27 → 2023-01-26 (-1d) | 32h → 16h | 0.67d → 1.5d | resources AnalistaP → AnalistaW; AnalistaP |
| 38 | Validacion del producto por los usuarios | 2023-01-27 → 2023-01-26 (-1d) | 2023-01-30 → 2023-01-27 (-3d) |  | 0.67d → 1.5d | resources AnalistaP; Jefe A → Jefe A; AnalistaP |
| 39 | **Documentacion** |  |  | 20.5d → 20d |  |  |

## Version 3 (saved 2022-11-22, file P2FINAL_PARTE2.mpp)

Last finish stays 2023-01-30. Complete tasks 0 → 8.

Changed:

| ID | Task | Start | Finish | Duration | Complete | Total float | Other |
| --- | --- | --- | --- | --- | --- | --- | --- |
| 1 | **proyecto** | 2022-11-17 A |  | 40.5d → 40.75d | 0% → 22% |  | baseline start none → 2022-11-17; baseline finish none → 2023-01-30 |
| 2 | **Requerimientos de los usuarios** | 2022-11-17 A | 2022-11-24 A |  | 0% → 100% | 0.5d → none | baseline start none → 2022-11-17; baseline finish none → 2022-11-24 |
| 3 | Toma de requisitos de usuario | 2022-11-17 A | 2022-11-23 A |  | 0% → 100% | 0.5d → none | baseline start none → 2022-11-17; baseline finish none → 2022-11-23 |
| 4 | Validacion de los requisitos de usuarios | 2022-11-24 A | 2022-11-24 A |  | 0% → 100% | 0.5d → none | baseline start none → 2022-11-24; baseline finish none → 2022-11-24 |
| 5 | **Analisis de requisitos del software** | 2022-11-17 A | 2022-11-25 → 2022-12-09 (+14d) | 7d → 15d | 0% → 83% | 4d → 0d | baseline start none → 2022-11-17; baseline finish none → 2022-11-30 |
| 6 | Estudio de los requisitos software | 2022-11-17 A | 2022-11-21 A |  | 0% → 100% | 1d → none | baseline start none → 2022-11-17; baseline finish none → 2022-11-21 |
| 7 | Validacion de los requisitos de software | 2022-11-22 A | 2022-11-22 A |  | 0% → 100% | 1d → none | baseline start none → 2022-11-22; baseline finish none → 2022-11-22 |
| 8 | Instalacion del software necesario en los PCs | 2022-11-23 → 2022-12-05 A (+12d) | 2022-11-24 → 2022-12-07 (+13d) |  | 0% → 50% | 4d → 0d | constraint start no earlier than 2022-11-22 → start no earlier than 2022-12-05; baseline start none → 2022-11-23; baseline finish none → 2022-11-28 |
| 9 | Preparacion de los puestos de trabajo | 2022-11-25 → 2022-12-09 (+14d) | 2022-11-25 → 2022-12-09 (+14d) |  |  | 4d → 0d | baseline start none → 2022-11-29; baseline finish none → 2022-11-30 |
| 10 | Preparacion del servidor de desarrollo | 2022-11-22 A | 2022-11-25 A |  | 0% → 100% | 4d → none | baseline start none → 2022-11-22; baseline finish none → 2022-11-25 |
| 11 | Preparacion del servidor de preexplotacion | 2022-11-22 A | 2022-11-22 A |  | 0% → 100% | 7d → none | baseline start none → 2022-11-22; baseline finish none → 2022-11-22 |
| 12 | **Analisis de requisitos del sistema** | 2022-11-25 A | 2022-12-01 A |  | 0% → 100% | 0.5d → none | baseline start none → 2022-11-25; baseline finish none → 2022-12-01 |
| 13 | Estimacion de hardware necesario | 2022-11-25 A | 2022-11-29 A |  | 0% → 100% | 0.5d → none | baseline start none → 2022-11-25; baseline finish none → 2022-11-29 |
| 14 | Validacion de hardware necesario | 2022-11-30 A | 2022-12-01 A |  | 0% → 100% | 0.5d → none | baseline start none → 2022-11-30; baseline finish none → 2022-12-01 |
| 15 | **Diseño preliminar** | 2022-12-01 → 2022-12-12 (+11d) | 2022-12-21 → 2023-01-19 (+29d) | 12d → 18.42d |  | 0.5d → 0d | baseline start none → 2022-12-01; baseline finish none → 2022-12-21 |
| 16 | Diseño de los datos y procesos | 2022-12-01 → 2022-12-12 (+11d) | 2022-12-13 → 2022-12-19 (+6d) |  |  | 0.5d → 0d | baseline start none → 2022-12-01; baseline finish none → 2022-12-13 |
| 17 | Diseño del plan de pruebas | 2022-12-13 → 2023-01-17 (+35d) | 2022-12-21 → 2023-01-19 (+29d) | 1.5d → 1.42d |  | 18d → 7.33d | baseline start none → 2022-12-13; baseline finish none → 2022-12-21 |
| 18 | **Diseño detallado** | 2022-12-19 → 2022-12-20 (+1d) |  | 19.5d → 18.58d |  | 1d → 1.17d | baseline start none → 2022-12-19; baseline finish none → 2023-01-27 |
| 19 | Diseño grafico de la aplicación | 2022-12-19 → 2022-12-20 (+1d) | 2022-12-23 → 2023-01-09 (+17d) |  |  | 15.5d → 14.75d | baseline start none → 2022-12-19; baseline finish none → 2022-12-23 |
| 20 | **Diseño tecnico de componentes** | 2022-12-21 → 2023-01-10 (+20d) |  | 17d → 13.58d |  | 1d → 1.17d | baseline start none → 2022-12-21; baseline finish none → 2023-01-27 |
| 21 | Presentacion | 2023-01-09 → 2023-01-12 (+3d) | 2023-01-09 → 2023-01-12 (+3d) |  |  | 14.5d → 11.75d | baseline start none → 2023-01-09; baseline finish none → 2023-01-09 |
| 22 | Mantenimiento de explotacion perquera |  |  |  |  | 12.5d → 12.75d | baseline start none → 2023-01-10; baseline finish none → 2023-01-11 |
| 23 | Mantenimiento de historial; Reservas, Tarifas y Eventos | 2023-01-23 → 2023-01-18 (-5d) |  |  |  | 1d → 1.17d | resources ProgramadorJ → ProgramadorJ; AnalistaW; baseline start none → 2023-01-23; baseline finish none → 2023-01-27 |
| 24 | Localizacion | 2022-12-21 → 2023-01-10 (+20d) | 2023-01-11 → 2023-01-16 (+5d) |  |  | 13d → 9.75d | baseline start none → 2022-12-21; baseline finish none → 2023-01-11 |
| 25 | **Diseño de la base de datos** | 2022-12-14 → 2022-12-20 (+6d) | 2022-12-20 → 2023-01-18 (+29d) | 5d → 11.33d |  | 3d → 4.33d | baseline start none → 2022-12-14; baseline finish none → 2022-12-20 |
| 26 | Diseño de tablas y relaciones | 2022-12-14 → 2022-12-20 (+6d) | 2022-12-16 → 2022-12-22 (+6d) |  |  | 3d → 4.33d | baseline start none → 2022-12-14; baseline finish none → 2022-12-16 |
| 27 | Validacion del diseño de la BD | 2022-12-19 → 2022-12-23 (+4d) | 2022-12-20 → 2023-01-18 (+29d) | 2d → 3d |  | 3d → 4.33d | baseline start none → 2022-12-19; baseline finish none → 2022-12-20 |
| 28 | **Construccion** | 2022-12-12 → 2022-12-16 (+4d) | 2023-01-23 → 2023-01-24 (+1d) | 20.5d → 17.42d |  |  | baseline start none → 2022-12-12; baseline finish none → 2023-01-23 |
| 29 | Construccion del prototipo | 2023-01-18 → 2023-01-13 (-5d) | 2023-01-23 → 2023-01-19 (-4d) |  |  | 5d → 7d | baseline start none → 2023-01-18; baseline finish none → 2023-01-23 |
| 30 | Construccion de la BD | 2023-01-11 → 2023-01-19 (+8d) | 2023-01-16 → 2023-01-24 (+8d) |  |  | 10d → 4.33d | resources AnalistaD; AnalistaW → AnalistaD; ProgramadorJ; baseline start none → 2023-01-11; baseline finish none → 2023-01-16 |
| 31 | Codificacion | 2022-12-12 → 2022-12-16 (+4d) | 2023-01-16 → 2023-01-17 (+1d) | 15.5d → 12.33d |  |  | resources AnalistaP; ProgramadorJ → AnalistaP; ProgramadorJ; Jefe A; baseline start none → 2022-12-12; baseline finish none → 2023-01-16 |
| 32 | **Pruebas** | 2023-01-16 → 2023-01-17 (+1d) |  | 5.5d → 4.92d |  |  | baseline start none → 2023-01-16; baseline finish none → 2023-01-24 |
| 33 | Pruebas unitarias | 2023-01-16 → 2023-01-17 (+1d) | 2023-01-17 → 2023-01-18 (+1d) | 1d → 0.75d |  |  | resources AnalistaP; ProgramadorJ; AnalistaW → AnalistaP; ProgramadorJ; AnalistaW; AnalistaD; baseline start none → 2023-01-16; baseline finish none → 2023-01-17 |
| 34 | Pruebas de integracion | 2023-01-17 → 2023-01-18 (+1d) |  | 1d → 0.67d |  |  | resources AnalistaP; ProgramadorJ → AnalistaP; ProgramadorJ; AnalistaD; baseline start none → 2023-01-17; baseline finish none → 2023-01-18 |
| 35 | Pruebas del sistema |  |  |  |  |  | baseline start none → 2023-01-18; baseline finish none → 2023-01-24 |
| 36 | **Demostracion a los usuarios** |  |  |  |  |  | baseline start none → 2023-01-24; baseline finish none → 2023-01-27 |
| 37 | Entrenamiento de usuarios |  |  |  |  |  | baseline start none → 2023-01-24; baseline finish none → 2023-01-26 |
| 38 | Validacion del producto por los usuarios |  |  |  |  |  | baseline start none → 2023-01-26; baseline finish none → 2023-01-27 |
| 39 | **Documentacion** | 2022-12-19 → 2022-12-20 (+1d) |  | 20d → 19.42d |  |  | baseline start none → 2022-12-19; baseline finish none → 2023-01-30 |
| 40 | Documentacion tecnica de proyecto | 2022-12-19 → 2022-12-20 (+1d) | 2023-01-16 → 2023-01-17 (+1d) |  |  | 10d → 9.42d | baseline start none → 2022-12-19; baseline finish none → 2023-01-16 |
| 41 | Documentacion de usuarios |  |  |  |  |  | baseline start none → 2023-01-23; baseline finish none → 2023-01-30 |

## Version 4 (saved 2022-11-23, file P2FINAL_PARTE2_TRABAJADOR.mpp)

Last finish 2023-01-30 → 2023-01-25 (-5d).

Added:

| ID | Task | Duration | Start | Finish | Constraint | Resources |
| --- | --- | --- | --- | --- | --- | --- |
| 45 | Formacion trabajadores | 5d | 2022-12-05 | 2022-12-13 | start no earlier than 2022-12-05 | ProgramadorJEXTRA |

Changed:

| ID | Task | Start | Finish | Duration | Complete | Total float | Other |
| --- | --- | --- | --- | --- | --- | --- | --- |
| 1 | **proyecto** |  | 2023-01-30 → 2023-01-25 (-5d) | 40.75d → 37.81d | 22% → 21% |  |  |
| 15 | **Diseño preliminar** |  | 2023-01-19 → 2023-01-17 (-2d) | 18.42d → 17d |  |  |  |
| 17 | Diseño del plan de pruebas | 2023-01-17 → 2023-01-13 (-4d) | 2023-01-19 → 2023-01-17 (-2d) | 1.42d → 2d |  | 7.33d → 5.81d |  |
| 18 | **Diseño detallado** |  | 2023-01-27 → 2023-01-25 (-2d) | 18.58d → 16.31d |  | 1.17d → 0.5d |  |
| 20 | **Diseño tecnico de componentes** |  | 2023-01-27 → 2023-01-25 (-2d) | 13.58d → 11.31d |  | 1.17d → 0.5d |  |
| 21 | Presentacion |  | 2023-01-12 → 2023-01-13 (+1d) |  |  | 11.75d → 8.06d |  |
| 23 | Mantenimiento de historial; Reservas, Tarifas y Eventos |  | 2023-01-27 → 2023-01-25 (-2d) |  |  | 1.17d → 0.5d |  |
| 24 | Localizacion |  | 2023-01-16 → 2023-01-19 (+3d) |  |  | 9.75d → 4.39d |  |
| 25 | **Diseño de la base de datos** |  | 2023-01-18 → 2023-01-13 (-5d) | 11.33d → 8.39d |  | 4.33d → 0.61d |  |
| 27 | Validacion del diseño de la BD |  | 2023-01-18 → 2023-01-13 (-5d) |  |  | 4.33d → 0.61d |  |
| 29 | Construccion del prototipo | 2023-01-13 → 2023-01-10 (-3d) | 2023-01-19 → 2023-01-16 (-3d) |  |  |  |  |
| 30 | Construccion de la BD | 2023-01-19 → 2023-01-16 (-3d) |  | 3d → 5d |  | 4.33d → 1.39d |  |
| 31 | Codificacion |  | 2023-01-17 → 2023-01-12 (-5d) | 12.33d → 9.39d |  |  | resources AnalistaP; ProgramadorJ; Jefe A → AnalistaP; ProgramadorJ; Jefe A; ProgramadorJEXTRA |
| 32 | **Pruebas** | 2023-01-17 → 2023-01-12 (-5d) | 2023-01-24 → 2023-01-19 (-5d) |  |  |  |  |
| 33 | Pruebas unitarias | 2023-01-17 → 2023-01-12 (-5d) | 2023-01-18 → 2023-01-13 (-5d) |  |  |  |  |
| 34 | Pruebas de integracion | 2023-01-18 → 2023-01-13 (-5d) | 2023-01-18 → 2023-01-13 (-5d) |  |  |  |  |
| 35 | Pruebas del sistema | 2023-01-18 → 2023-01-13 (-5d) | 2023-01-24 → 2023-01-19 (-5d) |  |  |  |  |
| 36 | **Demostracion a los usuarios** | 2023-01-24 → 2023-01-19 (-5d) | 2023-01-27 → 2023-01-24 (-3d) |  |  |  |  |
| 37 | Entrenamiento de usuarios | 2023-01-24 → 2023-01-19 (-5d) | 2023-01-26 → 2023-01-23 (-3d) |  |  |  |  |
| 38 | Validacion del producto por los usuarios | 2023-01-26 → 2023-01-23 (-3d) | 2023-01-27 → 2023-01-24 (-3d) |  |  |  |  |
| 39 | **Documentacion** | 2022-12-20 → 2022-12-05 (-15d) | 2023-01-30 → 2023-01-25 (-5d) | 19.42d → 25.81d |  |  |  |
| 40 | Documentacion tecnica de proyecto | 2022-12-20 → 2022-12-15 (-5d) | 2023-01-17 → 2023-01-12 (-5d) |  |  |  |  |
| 41 | Documentacion de usuarios | 2023-01-23 → 2023-01-18 (-5d) | 2023-01-30 → 2023-01-25 (-5d) |  |  |  |  |

## Version 5 (saved 2022-11-23, file P2FINAL_PARTE2_HE.mpp)

Last finish 2023-01-25 → 2023-01-26 (+1d).

Removed: 45 Formacion trabajadores

Changed:

| ID | Task | Start | Finish | Duration | Complete | Total float | Other |
| --- | --- | --- | --- | --- | --- | --- | --- |
| 1 | **proyecto** |  | 2023-01-25 → 2023-01-26 (+1d) | 37.81d → 38.13d | 21% → 23% |  |  |
| 15 | **Diseño preliminar** |  |  | 17d → 16.91d |  |  |  |
| 16 | Diseño de los datos y procesos |  | 2022-12-19 → 2022-12-16 (-3d) | 6d → 4.57d |  |  |  |
| 17 | Diseño del plan de pruebas | 2023-01-13 → 2022-12-23 (-21d) |  |  |  | 5.81d → 6.23d |  |
| 18 | **Diseño detallado** | 2022-12-20 → 2022-12-19 (-1d) | 2023-01-25 → 2023-01-24 (-1d) | 16.31d → 16.82d |  | 0.5d → 1.31d |  |
| 19 | Diseño grafico de la aplicación | 2022-12-20 → 2022-12-19 (-1d) | 2023-01-09 → 2022-12-23 (-17d) |  |  | 11.81d → 13.13d |  |
| 20 | **Diseño tecnico de componentes** | 2023-01-10 → 2023-01-09 (-1d) | 2023-01-25 → 2023-01-24 (-1d) | 11.31d → 11.82d |  | 0.5d → 1.31d |  |
| 21 | Presentacion | 2023-01-12 → 2023-01-09 (-3d) | 2023-01-13 → 2023-01-09 (-4d) |  |  | 8.06d → 12.13d |  |
| 23 | Mantenimiento de historial; Reservas, Tarifas y Eventos | 2023-01-18 → 2023-01-20 (+2d) | 2023-01-25 → 2023-01-24 (-1d) | 4d → 2.5d |  | 0.5d → 1.31d |  |
| 24 | Localizacion | 2023-01-10 → 2023-01-09 (-1d) | 2023-01-19 → 2023-01-17 (-2d) |  |  | 4.39d → 6.14d |  |
| 25 | **Diseño de la base de datos** | 2022-12-20 → 2022-12-16 (-4d) | 2023-01-13 → 2023-01-16 (+3d) | 8.39d → 11.33d |  | 0.61d → 1.14d |  |
| 26 | Diseño de tablas y relaciones | 2022-12-20 → 2022-12-16 (-4d) | 2022-12-22 → 2022-12-21 (-1d) |  |  | 0.61d → 1.14d |  |
| 27 | Validacion del diseño de la BD | 2022-12-23 → 2022-12-21 (-2d) | 2023-01-13 → 2023-01-16 (+3d) |  |  | 0.61d → 1.14d |  |
| 28 | **Construccion** | 2022-12-16 → 2022-12-14 (-2d) |  | 17.42d → 19.42d |  |  |  |
| 29 | Construccion del prototipo | 2023-01-10 → 2023-01-11 (+1d) | 2023-01-16 → 2023-01-18 (+2d) |  |  | 7d → 5.81d |  |
| 30 | Construccion de la BD | 2023-01-16 → 2023-01-17 (+1d) |  | 5d → 3d |  | 1.39d → 1.14d |  |
| 31 | Codificacion | 2022-12-16 → 2022-12-14 (-2d) | 2023-01-12 → 2023-01-13 (+1d) | 9.39d → 12.33d |  |  | resources AnalistaP; ProgramadorJ; Jefe A; ProgramadorJEXTRA → AnalistaP; ProgramadorJ; Jefe A |
| 32 | **Pruebas** | 2023-01-12 → 2023-01-13 (+1d) | 2023-01-19 → 2023-01-20 (+1d) |  |  |  |  |
| 33 | Pruebas unitarias | 2023-01-12 → 2023-01-13 (+1d) | 2023-01-13 → 2023-01-16 (+3d) |  |  |  |  |
| 34 | Pruebas de integracion | 2023-01-13 → 2023-01-16 (+3d) | 2023-01-13 → 2023-01-17 (+4d) |  |  |  |  |
| 35 | Pruebas del sistema | 2023-01-13 → 2023-01-17 (+4d) | 2023-01-19 → 2023-01-20 (+1d) |  |  | 1.5d → 0.31d |  |
| 36 | **Demostracion a los usuarios** | 2023-01-19 → 2023-01-20 (+1d) | 2023-01-24 → 2023-01-25 (+1d) |  |  | 1.5d → 0.31d |  |
| 37 | Entrenamiento de usuarios | 2023-01-19 → 2023-01-20 (+1d) | 2023-01-23 → 2023-01-24 (+1d) |  |  | 1.5d → 0.31d | resources AnalistaW; AnalistaP → AnalistaP; AnalistaD |
| 38 | Validacion del producto por los usuarios | 2023-01-23 → 2023-01-24 (+1d) | 2023-01-24 → 2023-01-25 (+1d) |  |  | 1.5d → 0.31d |  |
| 39 | **Documentacion** | 2022-12-05 → 2022-12-16 (+11d) | 2023-01-25 → 2023-01-26 (+1d) | 25.81d → 18.23d |  |  |  |
| 40 | Documentacion tecnica de proyecto | 2022-12-15 → 2022-12-16 (+1d) | 2023-01-12 → 2023-01-13 (+1d) |  |  | 9.42d → 8.23d |  |
| 41 | Documentacion de usuarios | 2023-01-18 → 2023-01-20 (+2d) | 2023-01-25 → 2023-01-26 (+1d) | 5d → 3.81d |  |  |  |
